# DFS人力资源系统重构项目

Schedule from a web Gantt chart, 2024-07-01 to 2024-07-01.
Saturdays and Sundays are off

## Schedule

| ID | WBS | Task | Duration | Start | Finish |
| --- | --- | --- | --- | --- | --- |
| 2 | 1 | 项目准备阶段 | 1d | 2024-07-01 | 2024-07-01 |
